# Pikes Peak 2014 2015

Schedule from GanttProject, 2014-07-13 to 2015-07-23.
Buckeye Current
Holidays every year on 01-01, 07-04, 11-11, 12-25

## Calendars

- Project calendar: Mon-Sun working. Exceptions (off unless hours are given): 2014-09-01, 2014-10-13, 2014-11-27, 2015-01-19, 2015-02-16, 2015-05-25.

## Schedule

| ID | WBS | Task | Type | Duration | Start | Finish | Predecessors |
| --- | --- | --- | --- | --- | --- | --- | --- |
| 1 | 1 | Pikes Peak | milestone | 0d | 2015-06-28 | 2015-06-28 |  |
| 2 | 2 | Autum Sem. | milestone | 0d | 2014-08-27 | 2014-08-27 |  |
| 3 | 3 | Autum Finals |  | 7d | 2014-12-11 | 2014-12-17 |  |
| 4 | 4 | Winter Break |  | 26d | 2014-12-18 | 2015-01-14 |  |
| 5 | 5 | Spring Sem | milestone | 0d | 2015-01-13 | 2015-01-13 |  |
| 6 | 6 | Spring Finals |  | 7d | 2015-04-29 | 2015-05-05 |  |
| 7 | 7 | Summer Break | milestone | 0d | 2015-05-04 | 2015-05-04 |  |
| 8 | 8 | Define Requirements (RW-3) |  | 3d | 2014-07-13 | 2014-07-15 |  |
| 9 | 9 | Design System (RW-3) |  | 4d | 2014-07-16 | 2014-07-19 | 8 |
| 10 | 10 | **Build (RW-3)** |  | 307d | 2014-07-20 | 2015-05-31 | 9 |
| 11 | 10.1 | **Powertrain** |  | 272d | 2014-07-20 | 2015-04-25 | 9 |
| 12 | 10.1.1 | Define Requirements (Powertrain) |  | 33d | 2014-07-20 | 2014-08-21 | 9 |
| 13 | 10.1.2 | Design System (Powertrain) |  | 7d | 2014-08-22 | 2014-08-28 | 12 |
| 14 | 10.1.3 | **Build (Powertrain)** |  | 90d | 2014-08-29 | 2014-11-30 | 13 |
| 15 | 10.1.3.1 | **Motor** |  | 30d | 2014-08-29 | 2014-09-28 | 13 |
| 16 | 10.1.3.1.1 | Define Requirements (Motor) |  | 1d | 2014-08-29 | 2014-08-29 | 13 |
| 17 | 10.1.3.1.2 | **Design System (Motor)** |  | 8d | 2014-08-30 | 2014-09-07 | 16 |
| 18 | 10.1.3.1.2.1 | Choose Motor |  | 8d | 2014-08-30 | 2014-09-07 | 16 |
| 19 | 10.1.3.1.3 | **Build (Motor)** |  | 21d | 2014-09-08 | 2014-09-28 | 17 |
| 20 | 10.1.3.1.3.1 | Purchase Motor |  | 7d | 2014-09-08 | 2014-09-14 | 17 |
| 21 | 10.1.3.1.3.2 | Recieve Motor |  | 14d | 2014-09-15 | 2014-09-28 | 20 |
| 22 | 10.1.3.2 | **Motor Controller** |  | 60d | 2014-08-29 | 2014-10-29 | 13 |
| 23 | 10.1.3.2.1 | Define Requirements (M/C) |  | 1d | 2014-08-29 | 2014-08-29 | 13 |
| 24 | 10.1.3.2.2 | **Design System (M/C)** |  | 8d | 2014-08-30 | 2014-09-07 | 23 |
| 25 | 10.1.3.2.2.1 | Choose Controller |  | 8d | 2014-08-30 | 2014-09-07 | 23 |

| ID | WBS | Task | Duration | Start | Finish | Predecessors |
| --- | --- | --- | --- | --- | --- | --- |
| 26 | 10.1.3.2.3 | **Build (M/C)** | 51d | 2014-09-08 | 2014-10-29 | 24 |
| 27 | 10.1.3.2.3.1 | Purchase Controller | 7d | 2014-09-08 | 2014-09-14 | 24 |
| 28 | 10.1.3.2.3.2 | Recieve Controller | 14d | 2014-09-15 | 2014-09-28 | 27 |
| 29 | 10.1.3.2.3.3 | Configure Controller to Motor | 30d | 2014-09-29 | 2014-10-29 | 28 |
| 30 | 10.1.3.3 | **Pack** | 88d | 2014-08-29 | 2014-11-28 | 13 |
| 31 | 10.1.3.3.1 | Define Requirements (Pack) | 1d | 2014-08-29 | 2014-08-29 | 13 |
| 32 | 10.1.3.3.2 | **Design System (Pack)** | 22d | 2014-08-30 | 2014-09-21 | 31 |
| 33 | 10.1.3.3.2.1 | Choose Battery | 8d | 2014-08-30 | 2014-09-07 | 31 |
| 34 | 10.1.3.3.2.2 | design Pack | 14d | 2014-09-08 | 2014-09-21 | 33 |
| 35 | 10.1.3.3.3 | **Build (Pack)** | 65d | 2014-09-22 | 2014-11-28 | 32 |
| 36 | 10.1.3.3.3.1 | Purchase Battery | 7d | 2014-09-22 | 2014-09-28 | 32 |
| 37 | 10.1.3.3.3.2 | Recieve Battery | 14d | 2014-09-29 | 2014-10-12 | 36 |
| 38 | 10.1.3.3.3.3 | Test Cells | 14d | 2014-10-14 | 2014-10-27 | 37 |
| 39 | 10.1.3.3.3.4 | Module | 30d | 2014-10-28 | 2014-11-28 | 37, 38 |
| 40 | 10.1.3.3.3.5 | Sense Wiring | 30d | 2014-10-14 | 2014-11-13 | 37 |
| 41 | 10.1.3.3.3.6 | HV bussing | 30d | 2014-10-14 | 2014-11-13 | 37 |
| 42 | 10.1.3.4 | Gearing/Final Drive | 7d | 2014-10-30 | 2014-11-05 | 13, 15, 22 |
| 43 | 10.1.3.5 | Cooling | 30d | 2014-10-30 | 2014-11-30 | 13, 15, 22 |
| 44 | 10.1.4 | **Integration Testing (Powertrain)** | 142d | 2014-12-01 | 2015-04-25 | 14 |
| 45 | 10.1.4.1 | Test Motor with Controller | 60d | 2014-12-01 | 2015-02-01 | 14 |
| 46 | 10.1.4.2 | Test Battery with BMS | 30d | 2015-02-25 | 2015-03-26 | 14, 126 |
| 47 | 10.1.4.3 | Test Full Powertrain On Dyno | 30d | 2015-03-27 | 2015-04-25 | 45, 46 |
| 48 | 10.2 | **Chassis** | 181d | 2014-07-20 | 2015-01-23 | 9 |
| 49 | 10.2.1 | Define Requirements (Chassis) | 31d | 2014-07-20 | 2014-08-19 | 9 |
| 50 | 10.2.2 | Design System (Chassis) | 11d | 2014-08-20 | 2014-08-30 | 49 |

| ID | WBS | Task | Duration | Start | Finish | Predecessors |
| --- | --- | --- | --- | --- | --- | --- |
| 51 | 10.2.3 | **Build (Chassis)** | 137d | 2014-08-31 | 2015-01-21 |  |
| 52 | 10.2.3.1 | **Frame** | 137d | 2014-08-31 | 2015-01-21 | 50 |
| 53 | 10.2.3.1.1 | Define Requirements(Frame) | 1d | 2014-08-31 | 2014-08-31 | 50 |
| 54 | 10.2.3.1.2 | **Design (Frame)** | 20d | 2014-09-02 | 2014-09-21 | 53 |
| 55 | 10.2.3.1.2.1 | Select Frame | 6d | 2014-09-02 | 2014-09-07 |  |
| 56 | 10.2.3.1.2.2 | Get Frame CAD | 14d | 2014-09-08 | 2014-09-21 | 55 |
| 57 | 10.2.3.1.3 | **Build (Frame)** | 116d | 2014-09-22 | 2015-01-21 | 54 |
| 58 | 10.2.3.1.3.1 | Purchase Frame | 14d | 2014-09-22 | 2014-10-05 | 56 |
| 59 | 10.2.3.1.3.2 | Assemble rolling Chassis | 14d | 2014-10-06 | 2014-10-20 | 58 |
| 60 | 10.2.3.1.3.3 | Assign Chasis Volume | 14d | 2014-10-21 | 2014-11-03 | 59 |
| 61 | 10.2.3.1.3.4 | Place Components | 14d | 2014-11-04 | 2014-11-18 | 60 |
| 62 | 10.2.3.1.3.5 | CAD Full Vehicle | 30d | 2014-11-19 | 2014-12-19 | 61 |
| 63 | 10.2.3.1.3.6 | Do required rolling Chassis Maintienance | 30d | 2014-12-20 | 2015-01-21 | 62 |
| 64 | 10.2.3.2 | **Mounting Hardware** | 88d | 2014-08-31 | 2014-11-30 | 50 |
| 65 | 10.2.3.2.1 | Design Requirements (Mounting) | 14d | 2014-08-31 | 2014-09-14 | 50 |
| 66 | 10.2.3.2.2 | Design (Mounting) | 7d | 2014-09-15 | 2014-09-21 | 65 |
| 67 | 10.2.3.2.3 | **Build (Mounting)** | 67d | 2014-09-22 | 2014-11-30 | 66 |
| 68 | 10.2.3.2.3.1 | **Battery Frame** | 67d | 2014-09-22 | 2014-11-30 |  |
| 69 | 10.2.3.2.3.1.1 | Define Requirements (Battery Frame) | 7d | 2014-09-22 | 2014-09-28 | 34, 66 |
| 70 | 10.2.3.2.3.1.2 | Design (Battery Frame) | 30d | 2014-09-29 | 2014-10-29 | 69 |
| 71 | 10.2.3.2.3.1.3 | Build (Battery frame) | 30d | 2014-10-30 | 2014-11-30 | 70 |
| 72 | 10.2.3.2.3.2 | **Motor Mount** | 51d | 2014-09-22 | 2014-11-13 |  |
| 73 | 10.2.3.2.3.2.1 | Define Requirements (Motor Mount) | 7d | 2014-09-22 | 2014-09-28 | 18, 66 |
| 74 | 10.2.3.2.3.2.2 | Design (Motor Mount) | 14d | 2014-09-29 | 2014-10-12 | 73 |
| 75 | 10.2.3.2.3.2.3 | Build (Motor Mount) | 30d | 2014-10-14 | 2014-11-13 | 74 |

| ID | WBS | Task | Duration | Start | Finish | Predecessors |
| --- | --- | --- | --- | --- | --- | --- |
| 76 | 10.2.3.2.3.3 | **Controller Mount** | 51d | 2014-09-22 | 2014-11-13 |  |
| 77 | 10.2.3.2.3.3.1 | Define Requirements (Controller Mount) | 7d | 2014-09-22 | 2014-09-28 | 25, 66 |
| 78 | 10.2.3.2.3.3.2 | Design (Controller Mount) | 14d | 2014-09-29 | 2014-10-12 | 77 |
| 79 | 10.2.3.2.3.3.3 | Build (Controller Mount) | 30d | 2014-10-14 | 2014-11-13 | 78 |
| 80 | 10.2.3.2.3.4 | **Fairing Mount** | 35d | 2014-09-22 | 2014-10-27 |  |
| 81 | 10.2.3.2.3.4.1 | Define Requirements (Fairing Mount) | 7d | 2014-09-22 | 2014-09-28 | 66 |
| 82 | 10.2.3.2.3.4.2 | Design (Fairing Mount) | 14d | 2014-09-29 | 2014-10-12 | 81 |
| 83 | 10.2.3.2.3.4.3 | Build (Fairing Mount) | 14d | 2014-10-14 | 2014-10-27 | 82 |
| 84 | 10.2.3.3 | **Suspension and Brakes** | 65d | 2014-08-31 | 2014-11-05 | 50 |
| 85 | 10.2.3.3.1 | Define Requirements (S and B) | 14d | 2014-08-31 | 2014-09-14 | 50 |
| 86 | 10.2.3.3.2 | **Design (S and B)** | 14d | 2014-09-15 | 2014-09-28 | 85 |
| 87 | 10.2.3.3.2.1 | Chose Suspension | 14d | 2014-09-15 | 2014-09-28 | 85 |
| 88 | 10.2.3.3.2.2 | Chose Brakes | 14d | 2014-09-15 | 2014-09-28 | 85 |
| 89 | 10.2.3.3.3 | **Build (S and B)** | 37d | 2014-09-29 | 2014-11-05 | 86 |
| 90 | 10.2.3.3.3.1 | Purchase Suspendsion Components | 7d | 2014-09-29 | 2014-10-05 | 85, 86 |
| 91 | 10.2.3.3.3.2 | Do Suspension work | 30d | 2014-10-06 | 2014-11-05 | 86, 90 |
| 92 | 10.2.3.3.3.3 | Purchase Brakes | 7d | 2014-09-29 | 2014-10-05 | 86 |
| 93 | 10.2.4 | **Integration Test (Chassis)** | 2d | 2015-01-22 | 2015-01-23 | 51, 52, 64, 84 |
| 94 | 10.2.4.1 | Suspension Install | 1d | 2015-01-22 | 2015-01-22 | 51 |
| 95 | 10.2.4.2 | Brakes Installed | 1d | 2015-01-22 | 2015-01-22 | 51 |
| 96 | 10.2.4.3 | Check for interference | 1d | 2015-01-23 | 2015-01-23 | 94, 95 |
| 97 | 10.3 | **Aerodynamics** | 260d | 2014-07-20 | 2015-04-13 | 9 |
| 98 | 10.3.1 | Define Requirements (Aero) | 44d | 2014-07-20 | 2014-09-02 | 9 |
| 99 | 10.3.2 | **Design System (Aero)** | 111d | 2014-09-03 | 2014-12-26 | 98 |
| 100 | 10.3.2.1 | Define Fairing Bounding Volume and Shape | 30d | 2014-09-03 | 2014-10-02 |  |
| 101 | 10.3.2.2 | Design Fairing | 30d | 2014-10-03 | 2014-11-02 | 100 |
| 102 | 10.3.2.3 | CAD Fairing | 30d | 2014-11-03 | 2014-12-04 | 81, 101 |
| 103 | 10.3.2.4 | Decide Fairing Material | 7d | 2014-12-05 | 2014-12-11 | 102 |
| 104 | 10.3.2.5 | Purchase Fairing components | 14d | 2014-12-12 | 2014-12-26 | 103 |

| ID | WBS | Task | Duration | Start | Finish | Predecessors |
| --- | --- | --- | --- | --- | --- | --- |
| 105 | 10.3.3 | **Build (Aero)** | 75d | 2014-12-27 | 2015-03-14 | 99 |
| 106 | 10.3.3.1 | Build Models | 30d | 2014-12-27 | 2015-01-27 | 104 |
| 107 | 10.3.3.2 | Build Fairing | 45d | 2015-01-28 | 2015-03-14 | 106 |
| 108 | 10.3.4 | **Integration Testing (Aero)** | 30d | 2015-03-15 | 2015-04-13 | 105 |
| 109 | 10.3.4.1 | Simulate to determin CdA and Airflow | 30d | 2015-03-15 | 2015-04-13 | 107 |
| 110 | 10.4 | **Electronics** | 302d | 2014-07-20 | 2015-05-26 | 9 |
| 111 | 10.4.1 | Define Requirements (Electronics) | 43d | 2014-07-20 | 2014-08-31 | 9 |
| 112 | 10.4.2 | **Design (Electronics)** | 49d | 2014-09-02 | 2014-10-21 | 111 |
| 113 | 10.4.2.1 | Define subcomponents | 1d | 2014-09-02 | 2014-09-02 | 111 |
| 114 | 10.4.2.2 | Define connectors | 7d | 2014-09-02 | 2014-09-08 | 111 |
| 115 | 10.4.2.3 | Define Data Bus | 7d | 2014-09-02 | 2014-09-08 | 111 |
| 116 | 10.4.2.4 | Design Critiical | 14d | 2014-09-09 | 2014-09-22 | 115 |
| 117 | 10.4.2.5 | Design All | 14d | 2014-09-23 | 2014-10-06 | 116 |
| 118 | 10.4.2.6 | Design all Software | 14d | 2014-10-07 | 2014-10-21 | 115, 117 |
| 119 | 10.4.2.7 | Define Dimensions of all hardware | 14d | 2014-10-07 | 2014-10-21 | 113, 114, 117 |
| 120 | 10.4.3 | **Buid (Electronics)** | 150d | 2014-10-22 | 2015-03-26 | 112 |
| 121 | 10.4.3.1 | **Critiical** | 120d | 2014-10-22 | 2015-02-24 | 112 |
| 122 | 10.4.3.1.1 | Datalogging | 1d | 2014-10-22 | 2014-10-22 | 112 |
| 123 | 10.4.3.1.2 | Low Voltaage Power | 1d | 2014-10-22 | 2014-10-22 | 112 |
| 124 | 10.4.3.1.3 | High Voltage Switching | 1d | 2014-10-22 | 2014-10-22 | 112 |
| 125 | 10.4.3.1.4 | Traction Control | 1d | 2014-10-22 | 2014-10-22 | 112 |
| 126 | 10.4.3.1.5 | Battery Managment system | 120d | 2014-10-22 | 2015-02-24 | 112 |
| 127 | 10.4.3.1.6 | Charging | 1d | 2014-10-22 | 2014-10-22 | 112 |
| 128 | 10.4.3.1.7 | Wiring harness | 1d | 2014-10-22 | 2014-10-22 | 112 |
| 129 | 10.4.3.2 | Build all Other | 30d | 2015-02-25 | 2015-03-26 | 112, 121 |
| 130 | 10.4.3.3 | Write Software | 129d | 2014-10-22 | 2015-03-05 | 112 |

| ID | WBS | Task | Duration | Start | Finish | Predecessors | Complete |
| --- | --- | --- | --- | --- | --- | --- | --- |
| 131 | 10.4.4 | **Integration Testing** | 60d | 2015-03-27 | 2015-05-26 | 120 |  |
| 132 | 10.4.4.1 | Software Testing | 30d | 2015-03-27 | 2015-04-25 | 120 | 1% |
| 133 | 10.4.4.2 | Unit Testing Critical | 30d | 2015-03-27 | 2015-04-25 | 120 |  |
| 134 | 10.4.4.3 | Full Electrical testing | 30d | 2015-04-26 | 2015-05-26 | 120, 133 |  |
| 135 | 10.5 | Mount Powertrain | 7d | 2015-04-26 | 2015-05-02 | 11 |  |
| 136 | 10.6 | Mount Electronics | 14d | 2015-05-03 | 2015-05-16 | 135 |  |
| 137 | 10.7 | Assemble Full Vehicle | 14d | 2015-05-17 | 2015-05-31 | 48, 97, 135, 136 |  |
| 138 | 11 | **Integration Testing (RW-3)** | 52d | 2015-06-01 | 2015-07-23 | 10 |  |
| 139 | 11.1 | First Spin | 7d | 2015-06-01 | 2015-06-07 | 10 |  |
| 140 | 11.2 | Vehicle Dyno Testing | 15d | 2015-06-08 | 2015-06-22 | 139 |  |
| 141 | 11.3 | Vehicle Road Testing | 30d | 2015-06-23 | 2015-07-23 | 140 |  |
